# Riverside Warehouse

Schedule from Primavera P6, 2026-03-02 to 2026-06-30, data date 2026-03-16, A marks actual dates.

## Calendars

- 5 Day x 8h (US Holidays): Mon-Fri 08:00-12:00, 13:00-17:00; Sat-Sun off. Exceptions (off unless hours are given): 2026-03-14 08:00-12:00, 2026-03-21.
- 7 Day x 10h Earthwork: Mon-Sun 07:00-12:00, 12:30-17:30.

## Schedule

| ID | WBS | Activity | Type | Duration | Start | Finish | Predecessors | Complete | Remaining | Total float | Free float | Constraint | Calendar |
| --- | --- | --- | --- | --- | --- | --- | --- | --- | --- | --- | --- | --- | --- |
| A1000 |  | Notice to Proceed | milestone | 0d | 2026-03-02 A | 2026-03-02 |  | 100% |  |  |  |  |  |
| A1070 |  | Substantial Completion | milestone | 0d | 2026-06-30 | 2026-06-30 | A1050, A1060 |  |  | 0d |  | finish on 2026-06-30 |  |
|  | SITE | **Sitework** |  |  | 2026-03-02 | 2026-04-07 |  |  |  |  |  |  |  |
| A1010 |  | Mobilize & Site Setup |  | 5d | 2026-03-02 A | 2026-03-06 A | A1000 | 100% |  |  |  |  |  |
| A1020 |  | Mass Excavation |  | 10d | 2026-03-09 A | 2026-03-21 | A1010 | 40% | 6d | 0d |  |  | 7 Day x 10h Earthwork |
|  | FDN | **Foundations** |  |  | 2026-03-13 | 2026-04-07 |  |  |  |  |  |  |  |
| A1030 |  | Spread Footings |  | 8d | 2026-03-13 | 2026-03-24 | A1020 SS+1.6d |  |  | 2d | 1d |  |  |
| A1060 |  | Cure Footings |  | 7d | 2026-03-25 | 2026-03-31 | A1030 FF+2.5d |  |  | 5d |  | finish on or before 2026-04-15 | 7 Day x 10h Earthwork |
| A1040 |  | Slab on Grade |  | 5d | 2026-04-01 | 2026-04-07 | A1030 |  |  | -1d | 0d | start on or after 2026-04-01 |  |
|  | STR | **Structure** |  |  | 2026-04-08 | 2026-04-28 |  |  |  |  |  |  |  |
| A1050 |  | Erect Structural Steel |  | 15d | 2026-04-08 | 2026-04-28 | A1040 |  |  | 0d |  |  |  |
